# MoCab Project Plan

Schedule from MS Project, 2015-10-20 to 2016-02-18, A marks actual dates.

## Calendars

- Standard: Mon-Fri 08:00-12:00, 13:00-17:00; Sat-Sun off. Exceptions (off unless hours are given): 2016-01-16 08:00-12:00, 13:00-17:00.

## Resources

| Resource |
| --- |
| Fabian Ochsner |
| Christian Sax |

## Schedule

| ID | WBS | Task | Type | Duration | Start | Finish | Predecessors | Complete | Remaining | Total slack | Resources | Work | Actual work |
| --- | --- | --- | --- | --- | --- | --- | --- | --- | --- | --- | --- | --- | --- |
| 1 | 1 | **Project Preparation** |  | 4d? | 2015-10-20 | 2015-10-23 |  |  |  | 0d |  | 40h |  |
| 2 | 1.1 | **Prepare Documents** |  | 4d? | 2015-10-20 | 2015-10-23 |  |  |  | 0d |  | 40h |  |
| 3 | 1.1.1 | Define specification |  | 1d? | 2015-10-20 | 2015-10-20 |  |  |  | 0d | Christian Sax | 8h |  |
| 4 | 1.1.2 | Create Project Approvement |  | 1d | 2015-10-21 | 2015-10-21 | 3 |  |  | 0d | Christian Sax | 8h |  |
| 5 | 1.1.3 | Assign Tasks |  | 1d? | 2015-10-22 | 2015-10-22 | 4 |  |  | 0d | Christian Sax; Fabian Ochsner | 16h |  |
| 6 | 1.1.4 | Set project timeline |  | 1d? | 2015-10-23 | 2015-10-23 | 5 |  |  | 0d | Christian Sax | 8h |  |
| 7 | 2 | Preparation completed | milestone | 0d | 2015-10-23 | 2015-10-23 | 6 |  |  | 0d |  |  |  |
| 8 | 3 | **Design** |  | 44d? | 2015-10-26 A | 2015-12-24 | 7 | 37% | 27.56d? | 40.5d |  | 668h | 237.6h |
| 9 | 3.1 | **Chat component** |  | 10.5d | 2015-10-26 A | 2015-11-09 |  | 90% | 1.05d |  | Fabian Ochsner | 84h | 75.6h |
| 10 | 3.1.1 | Define features |  | 2d | 2015-10-26 A | 2015-10-27 A |  | 100% |  |  |  |  |  |
| 11 | 3.1.2 | Create class diagram |  | 1.5d | 2015-10-28 A | 2015-10-29 A | 10 | 100% |  |  |  |  |  |
| 12 | 3.1.3 | Create state diagram |  | 1.5d | 2015-10-29 A | 2015-10-30 A | 11 | 100% |  |  |  |  |  |
| 13 | 3.1.4 | Create messaging diagram |  | 1.5d | 2015-11-02 A | 2015-11-03 A | 12 | 100% |  |  |  |  |  |
| 14 | 3.1.5 | Define test cases |  | 1d | 2015-11-03 A | 2015-11-04 A | 13 | 100% |  |  |  |  |  |
| 15 | 3.1.6 | Define depencies |  | 1d | 2015-11-04 A | 2015-11-05 A | 14 | 100% |  |  |  |  |  |
| 16 | 3.1.7 | Create project UI mockup |  | 2d | 2015-11-05 A | 2015-11-09 | 15 | 48% | 1.05d | 0d |  |  |  |
| 17 | 3.1.8 | Design completed | milestone | 0d | 2015-11-09 | 2015-11-09 | 16 |  |  | 0d |  |  |  |
| 18 | 3.2 | **Balance component** |  | 7d | 2015-11-09 A | 2015-11-18 | 9 | 75% | 1.75d | 0d | Fabian Ochsner | 56h | 42h |
| 19 | 3.2.1 | Define features |  | 1d | 2015-11-09 A | 2015-11-10 A |  | 100% |  |  |  |  |  |
| 20 | 3.2.2 | Create class diagram |  | 1d | 2015-11-10 A | 2015-11-11 A | 19 | 100% |  |  |  |  |  |
| 21 | 3.2.3 | Create state diagram |  | 1d | 2015-11-11 A | 2015-11-12 A | 20 | 100% |  |  |  |  |  |
| 22 | 3.2.4 | Create messaging diagram |  | 1d | 2015-11-12 A | 2015-11-13 A | 21 | 100% |  |  |  |  |  |
| 23 | 3.2.5 | Define test cases |  | 1d | 2015-11-13 A | 2015-11-16 A | 22 | 100% |  |  |  |  |  |
| 24 | 3.2.6 | Define depencies |  | 1d | 2015-11-16 A | 2015-11-17 | 23 | 25% | 0.75d | 0d |  |  |  |
| 25 | 3.2.7 | Create project UI mockup |  | 1d | 2015-11-17 | 2015-11-18 | 24 |  |  | 0d |  |  |  |
| 26 | 3.2.8 | Design completed | milestone | 0d | 2015-11-18 | 2015-11-18 | 25 |  |  | 0d |  |  |  |

| ID | WBS | Task | Type | Duration | Start | Finish | Predecessors | Total slack | Free slack | Constraint | Resources | Work |
| --- | --- | --- | --- | --- | --- | --- | --- | --- | --- | --- | --- | --- |
| 27 | 3.3 | **Communication component** |  | 8d? | 2015-11-26 | 2015-12-07 |  |  |  |  | Christian Sax | 64h |
| 28 | 3.3.1 | Define features |  | 0.5d | 2015-10-30 | 2015-10-30 |  | 4.5d | 0d | start no earlier than 2015-10-30 |  |  |
| 29 | 3.3.2 | Create class diagram |  | 1d | 2015-11-26 | 2015-11-26 | 28 | 4d | 0d |  |  |  |
| 30 | 3.3.3 | Create state diagram |  | 0.5d | 2015-11-27 | 2015-11-27 | 29 | 4d | 0d |  |  |  |
| 31 | 3.3.4 | Create messaging diagram |  | 1d? | 2015-11-27 | 2015-11-30 | 30 | 4d | 0d |  |  |  |
| 32 | 3.3.5 | Define test cases |  | 0.5d | 2015-11-30 | 2015-11-30 | 31 | 4d | 0d |  |  |  |
| 33 | 3.3.6 | Define depencies |  | 1d | 2015-12-01 | 2015-12-01 | 32 | 4d | 0d |  |  |  |
| 34 | 3.3.7 | Design completed | milestone | 0d | 2015-12-01 | 2015-12-01 | 33 | 17.5d | 17d | finish no earlier than 2015-11-10 |  |  |
| 35 | 3.4 | **Logging component** |  | 6d | 2015-11-18 | 2015-11-26 | 18 | 0d |  |  | Fabian Ochsner | 48h |
| 36 | 3.4.1 | Define features |  | 1d | 2015-11-18 | 2015-11-19 |  | 0d |  |  |  |  |
| 37 | 3.4.2 | Create class diagram |  | 1d | 2015-11-19 | 2015-11-20 | 36 | 0d |  |  |  |  |
| 38 | 3.4.3 | Create state diagram |  | 1d | 2015-11-20 | 2015-11-23 | 37 | 0d |  |  |  |  |
| 39 | 3.4.4 | Create messaging diagram |  | 1d | 2015-11-23 | 2015-11-24 | 38 | 0d |  |  |  |  |
| 40 | 3.4.5 | Define test cases |  | 1d | 2015-11-24 | 2015-11-25 | 39 | 0d |  |  |  |  |
| 41 | 3.4.6 | Define depencies |  | 1d | 2015-11-25 | 2015-11-26 | 40 | 0d |  |  |  |  |
| 42 | 3.4.7 | Design completed | milestone | 0d | 2015-11-26 | 2015-11-26 | 41 | 0d |  |  |  |  |
| 43 | 3.5 | **Persistence Layer** |  | 8.5d | 2015-10-30 | 2015-11-11 |  |  |  |  | Christian Sax | 68h |
| 44 | 3.5.1 | Define data model |  | 1d | 2015-11-10 | 2015-11-10 |  | -7d | 0d | start no earlier than 2015-11-10 |  |  |
| 45 | 3.5.2 | Define features |  | 1d | 2015-11-11 | 2015-11-11 | 44 | -7d | 0d |  |  |  |
| 46 | 3.5.3 | Create class diagram |  | 1.5d | 2015-11-12 | 2015-11-13 | 45 | -7d | 0d |  |  |  |
| 47 | 3.5.4 | Create state diagram |  | 1.5d | 2015-11-13 | 2015-11-16 | 46 | -7d | 0d |  |  |  |
| 48 | 3.5.5 | Create messaging diagram |  | 1.5d | 2015-11-17 | 2015-11-18 | 47 | -7d | 0d |  |  |  |
| 49 | 3.5.6 | Define test cases |  | 1d | 2015-11-18 | 2015-11-19 | 48 | -7d | 0d |  |  |  |
| 50 | 3.5.7 | Define depencies |  | 1d | 2015-11-19 | 2015-11-20 | 49 | -7d | 0d |  |  |  |
| 51 | 3.5.8 | Design completed | milestone | 0d | 2015-11-20 | 2015-11-20 | 50 | 34d | 24d | finish no earlier than 2015-11-20 |  |  |

| ID | WBS | Task | Type | Duration | Start | Finish | Predecessors | Complete | Remaining | Total slack | Free slack | Constraint | Resources | Work | Actual work |
| --- | --- | --- | --- | --- | --- | --- | --- | --- | --- | --- | --- | --- | --- | --- | --- |
| 52 | 3.6 | **Poll component** |  | 7d | 2015-11-23 | 2015-12-01 | 43 |  |  | 10.5d | 0d |  | Christian Sax | 56h |  |
| 53 | 3.6.1 | Define features |  | 1.5d | 2015-11-23 | 2015-11-24 |  |  |  | 1.5d | 0d | start no earlier than 2015-11-23 |  |  |  |
| 54 | 3.6.2 | Create class diagram |  | 0.5d | 2015-11-24 | 2015-11-24 | 53 |  |  | 1.5d | 0d |  |  |  |  |
| 55 | 3.6.3 | Create state diagram |  | 0.5d | 2015-11-25 | 2015-11-25 | 54 |  |  | 1.5d | 0d |  |  |  |  |
| 56 | 3.6.4 | Create messaging diagram |  | 1d | 2015-11-25 | 2015-11-26 | 55 |  |  | 1.5d | 0d |  |  |  |  |
| 57 | 3.6.5 | Define test cases |  | 1d | 2015-11-26 | 2015-11-27 | 56 |  |  | 1.5d | 0d |  |  |  |  |
| 58 | 3.6.6 | Define depencies |  | 1d | 2015-11-27 | 2015-11-30 | 57 |  |  | 1.5d | 0d |  |  |  |  |
| 59 | 3.6.7 | Create poll UI mockup |  | 1d | 2015-11-30 | 2015-12-01 | 58 |  |  | 1.5d | 0.5d |  |  |  |  |
| 60 | 3.6.8 | Design completed | milestone | 0d | 2015-12-01 | 2015-12-01 | 59 |  |  | 10.5d |  | finish no earlier than 2015-12-01 |  |  |  |
| 61 | 3.7 | **Project component** |  | 9d | 2015-11-26 A | 2015-12-09 | 35 | 75% | 2.25d | 0d |  |  | Fabian Ochsner | 72h | 54h |
| 62 | 3.7.1 | Define features |  | 2d | 2015-11-26 A | 2015-11-30 A |  | 100% |  |  |  | start no earlier than 2015-11-24 |  |  |  |
| 63 | 3.7.2 | Create class diagram |  | 1d | 2015-11-30 A | 2015-12-01 A | 62 | 100% |  |  |  | start no earlier than 2015-11-26 |  |  |  |
| 64 | 3.7.3 | Create state diagram |  | 1d | 2015-12-01 A | 2015-12-02 A | 63 | 100% |  |  |  | start no earlier than 2015-11-27 |  |  |  |
| 65 | 3.7.4 | Create messaging diagram |  | 1d | 2015-12-02 A | 2015-12-03 A | 64 | 100% |  |  |  | start no earlier than 2015-11-30 |  |  |  |
| 66 | 3.7.5 | Define test cases |  | 1d | 2015-12-03 A | 2015-12-04 A | 65 | 100% |  |  |  | start no earlier than 2015-12-01 |  |  |  |
| 67 | 3.7.6 | Define depencies |  | 1d | 2015-12-04 A | 2015-12-07 | 66 | 75% | 0.25d | 0d |  | start no earlier than 2015-12-02 |  |  |  |
| 68 | 3.7.7 | Create project UI mockup |  | 2d | 2015-12-07 | 2015-12-09 | 67 |  |  | 0d |  | start no earlier than 2015-12-03 |  |  |  |
| 69 | 3.7.8 | Design completed | milestone | 0d | 2015-12-09 | 2015-12-09 | 68 |  |  | 0d |  | start no earlier than 2015-12-07 |  |  |  |
| 70 | 3.8 | **Security component** |  | 4.5d | 2015-12-02 | 2015-12-08 | 52 |  |  | 10.5d | 0.5d |  | Christian Sax | 36h |  |
| 71 | 3.8.1 | Define features |  | 1.5d | 2015-12-02 | 2015-12-03 |  |  |  | 1d | 0d | start no earlier than 2015-12-02 |  |  |  |
| 72 | 3.8.2 | Create class diagram |  | 1d | 2015-12-03 | 2015-12-04 | 71 |  |  | 1d | 0d |  |  |  |  |
| 73 | 3.8.3 | Create state diagram |  | 1d | 2015-12-04 | 2015-12-07 | 72 |  |  | 1d | 0d |  |  |  |  |
| 74 | 3.8.4 | Define test cases |  | 1d | 2015-12-07 | 2015-12-08 | 73 |  |  | 1d | 0d |  |  |  |  |
| 75 | 3.8.5 | Design completed | milestone | 0d | 2015-12-08 | 2015-12-08 | 74 |  |  | 1d |  |  |  |  |  |

| ID | WBS | Task | Type | Duration | Start | Finish | Predecessors | Complete | Remaining | Total slack | Free slack | Constraint | Resources | Work | Actual work |
| --- | --- | --- | --- | --- | --- | --- | --- | --- | --- | --- | --- | --- | --- | --- | --- |
| 76 | 3.9 | **Reporting component** |  | 5d | 2015-12-09 | 2015-12-15 | 70 |  |  | 10d | 0d |  | Christian Sax | 40h |  |
| 77 | 3.9.1 | Define features |  | 1d | 2015-12-09 | 2015-12-09 |  |  |  | 0.5d | 0d | start no earlier than 2015-12-09 |  |  |  |
| 78 | 3.9.2 | Create class diagram |  | 0.5d | 2015-12-10 | 2015-12-10 | 77 |  |  | 0.5d | 0d |  |  |  |  |
| 79 | 3.9.3 | Create state diagram |  | 0.5d | 2015-12-10 | 2015-12-10 | 78 |  |  | 0.5d | 0d |  |  |  |  |
| 80 | 3.9.4 | Create messaging diagram |  | 0.5d | 2015-12-11 | 2015-12-11 | 79 |  |  | 0.5d | 0d |  |  |  |  |
| 81 | 3.9.5 | Define test cases |  | 0.5d | 2015-12-11 | 2015-12-11 | 80 |  |  | 0.5d | 0d |  |  |  |  |
| 82 | 3.9.6 | Define depencies |  | 0.5d | 2015-12-14 | 2015-12-14 | 81 |  |  | 0.5d | 0d |  |  |  |  |
| 83 | 3.9.7 | Create reporting UI mockup |  | 1.5d | 2015-12-14 | 2015-12-15 | 82 |  |  | 0.5d | 0d |  |  |  |  |
| 84 | 3.9.8 | Design completed | milestone | 0d | 2015-12-15 | 2015-12-15 | 83 |  |  | 0.5d |  |  |  |  |  |
| 85 | 3.10 | **Task component** |  | 7d | 2015-12-16 | 2015-12-24 | 76 |  |  | 10d | 0d |  | Christian Sax | 56h |  |
| 86 | 3.10.1 | Define features |  | 1.5d | 2015-12-16 | 2015-12-17 |  |  |  | 0.5d | 0d | start no earlier than 2015-12-16 |  |  |  |
| 87 | 3.10.2 | Create class diagram |  | 0.5d | 2015-12-17 | 2015-12-17 | 86 |  |  | 0.5d | 0d |  |  |  |  |
| 88 | 3.10.3 | Create state diagram |  | 0.5d | 2015-12-18 | 2015-12-18 | 87 |  |  | 0.5d | 0d |  |  |  |  |
| 89 | 3.10.4 | Create messaging diagram |  | 1d | 2015-12-18 | 2015-12-21 | 88 |  |  | 0.5d | 0d |  |  |  |  |
| 90 | 3.10.5 | Define test cases |  | 1d | 2015-12-21 | 2015-12-22 | 89 |  |  | 0.5d | 0d |  |  |  |  |
| 91 | 3.10.6 | Define depencies |  | 1d | 2015-12-22 | 2015-12-23 | 90 |  |  | 0.5d | 0d |  |  |  |  |
| 92 | 3.10.7 | Create task UI mockup |  | 1.5d | 2015-12-23 | 2015-12-24 | 91 |  |  | 0.5d | 0d |  |  |  |  |
| 93 | 3.10.8 | Design completed | milestone | 0d | 2015-12-24 | 2015-12-24 | 92 |  |  | 0.5d | 0d |  |  |  |  |
| 94 | 3.11 | **UI component** |  | 11d | 2015-12-09 A | 2015-12-24 | 61 | 75% | 2.75d | 41d |  |  | Fabian Ochsner | 88h | 66h |
| 95 | 3.11.1 | Create UI mockups |  | 3d | 2015-12-09 A | 2015-12-14 A |  | 100% |  |  |  | start no earlier than 2015-12-07 |  |  |  |
| 96 | 3.11.2 | Design UI interfaces |  | 3d | 2015-12-14 A | 2015-12-17 A | 95 | 100% |  |  |  | start no earlier than 2015-12-10 |  |  |  |
| 97 | 3.11.3 | Define test cases |  | 2d | 2015-12-17 A | 2015-12-21 A | 96 | 100% |  |  |  | start no earlier than 2015-12-15 |  |  |  |
| 98 | 3.11.4 | Create UI diagram |  | 3d | 2015-12-21 A | 2015-12-24 | 97 | 8% | 2.75d | 41d | 0d | start no earlier than 2015-12-17 |  |  |  |
| 99 | 3.11.5 | Design completed | milestone | 0d | 2015-12-24 | 2015-12-24 | 98 |  |  | 41d |  | start no earlier than 2015-12-22 |  |  |  |

| ID | WBS | Task | Type | Duration | Start | Finish | Predecessors | Total slack | Free slack | Constraint | Resources | Work |
| --- | --- | --- | --- | --- | --- | --- | --- | --- | --- | --- | --- | --- |
| 100 | 4 | **Review** |  | 6d | 2015-12-25 | 2016-01-01 | 17, 26, 34, 42, 51, 60, 69, 84, 93 | 10d |  |  |  | 80h |
| 101 | 4.1 | **Review components** |  | 5d | 2015-12-25 | 2015-12-31 |  | 10d |  |  |  | 80h |
| 102 | 4.1.1 | Chat |  | 1d | 2015-12-25 | 2015-12-25 | 85 | 10d | 0d |  | Christian Sax | 8h |
| 103 | 4.1.2 | Balance |  | 1d | 2015-12-28 | 2015-12-28 | 102 | 10d | 0d |  | Christian Sax | 8h |
| 104 | 4.1.3 | Communication |  | 1d | 2015-12-25 | 2015-12-25 |  | 14d | 4d |  | Fabian Ochsner | 8h |
| 105 | 4.1.4 | Logging |  | 1d | 2015-12-29 | 2015-12-29 | 103 | 10d | 0d |  | Christian Sax | 8h |
| 106 | 4.1.5 | Persistence Layer |  | 1d | 2015-12-28 | 2015-12-28 |  | 3.5d | 3d | start no earlier than 2015-12-28 | Fabian Ochsner | 8h |
| 107 | 4.1.6 | Poll |  | 1d | 2015-12-29 | 2015-12-29 |  | 2.5d | 2d | start no earlier than 2015-12-29 | Fabian Ochsner | 8h |
| 108 | 4.1.7 | Project |  | 1d | 2015-12-30 | 2015-12-30 | 105 | 10d | 0d |  | Christian Sax | 8h |
| 109 | 4.1.8 | Reporting |  | 1d | 2015-12-30 | 2015-12-30 |  | 1.5d | 1d | start no earlier than 2015-12-30 | Fabian Ochsner | 8h |
| 110 | 4.1.9 | Task |  | 1d | 2015-12-31 | 2015-12-31 |  | 0.5d | 0d | start no earlier than 2015-12-31 | Fabian Ochsner | 8h |
| 111 | 4.1.10 | UI |  | 1d | 2015-12-31 | 2015-12-31 | 108 | 10d | 0d |  | Christian Sax | 8h |
| 112 | 4.2 | Review completed |  | 1d | 2016-01-01 | 2016-01-01 | 102, 103, 104, 105, 106, 107, 108, 109, 110, 111 | 10d | 0d |  |  |  |
| 113 | 5 | **Develop** |  | 28d | 2016-01-04 | 2016-02-09 | 112 | 0d |  |  |  | 288h |
| 114 | 5.1 | Chat |  | 3d | 2016-01-16 | 2016-01-19 | 110 | 0d |  | start no earlier than 2016-01-16 | Fabian Ochsner | 24h |
| 115 | 5.2 | Balance |  | 2d | 2016-01-20 | 2016-01-21 | 114 | 0d |  | start no earlier than 2016-01-07 | Fabian Ochsner | 16h |
| 116 | 5.3 | Communication |  | 3.5d | 2016-01-04 | 2016-01-07 | 111 | 10d | 0d | finish no earlier than 2016-01-06 | Christian Sax | 28h |
| 117 | 5.4 | Logging |  | 4d | 2016-01-22 | 2016-01-27 | 115 | 0d |  | start no earlier than 2016-01-11 | Fabian Ochsner | 32h |
| 118 | 5.5 | Persistence Layer |  | 3.5d | 2016-01-07 | 2016-01-12 | 116 | 10d | 0d | start no earlier than 2016-01-07 | Christian Sax | 28h |
| 119 | 5.6 | Poll |  | 4d | 2016-01-13 | 2016-01-16 | 118 | 10d | 1d | start no earlier than 2016-01-13 | Christian Sax | 32h |
| 120 | 5.7 | Project |  | 4d | 2016-01-28 | 2016-02-02 | 117 | 0d |  | start no earlier than 2016-01-15 | Fabian Ochsner | 32h |
| 121 | 5.8 | Security |  | 3d | 2016-01-19 | 2016-01-21 | 119 | 9d | 0d | start no earlier than 2016-01-19 | Christian Sax | 24h |
| 122 | 5.9 | Reporting |  | 2.5d | 2016-01-22 | 2016-01-26 | 121 | 9d | 0.5d |  | Christian Sax | 20h |
| 123 | 5.10 | Task |  | 1.5d | 2016-01-27 | 2016-01-28 | 122 | 8.5d |  | start no earlier than 2016-01-27 | Christian Sax | 12h |
| 124 | 5.11 | UI |  | 5d | 2016-02-03 | 2016-02-09 | 120 | 0d |  | start no earlier than 2016-01-21 | Fabian Ochsner | 40h |
| 125 | 5.12 | Development completed | milestone | 0d | 2016-02-09 | 2016-02-09 | 114, 115, 116, 117, 118, 119, 120, 122, 123, 124 | 0d |  | start no earlier than 2016-01-28 |  |  |

| ID | WBS | Task | Type | Duration | Start | Finish | Predecessors | Total slack | Constraint | Resources | Work |
| --- | --- | --- | --- | --- | --- | --- | --- | --- | --- | --- | --- |
| 126 | 6 | **Test** |  | 1.5d | 2016-02-10 | 2016-02-11 | 125 | 0d |  |  | 120h |
| 127 | 6.1 | Chat |  | 1.5d | 2016-02-10 | 2016-02-11 |  | 0d | start no earlier than 2016-01-28 | Christian Sax | 12h |
| 128 | 6.2 | Balance |  | 1.5d | 2016-02-10 | 2016-02-11 |  | 0d | start no earlier than 2016-01-28 | Christian Sax | 12h |
| 129 | 6.3 | Communication |  | 1.5d | 2016-02-10 | 2016-02-11 |  | 0d | start no earlier than 2016-01-28 | Fabian Ochsner | 12h |
| 130 | 6.4 | Logging |  | 1.5d | 2016-02-10 | 2016-02-11 |  | 0d | start no earlier than 2016-01-28 | Christian Sax | 12h |
| 131 | 6.5 | Persistence Layer |  | 1.5d | 2016-02-10 | 2016-02-11 |  | 0d | start no earlier than 2016-01-28 | Fabian Ochsner | 12h |
| 132 | 6.6 | Poll |  | 1.5d | 2016-02-10 | 2016-02-11 |  | 0d | start no earlier than 2016-01-28 | Fabian Ochsner | 12h |
| 133 | 6.7 | Project |  | 1.5d | 2016-02-10 | 2016-02-11 |  | 0d | start no earlier than 2016-01-28 | Christian Sax | 12h |
| 134 | 6.8 | Reporting |  | 1.5d | 2016-02-10 | 2016-02-11 |  | 0d | start no earlier than 2016-01-28 | Fabian Ochsner | 12h |
| 135 | 6.9 | Task |  | 1.5d | 2016-02-10 | 2016-02-11 |  | 0d | start no earlier than 2016-01-28 | Fabian Ochsner | 12h |
| 136 | 6.10 | UI |  | 1.5d | 2016-02-10 | 2016-02-11 |  | 0d | start no earlier than 2016-01-28 | Christian Sax | 12h |
| 137 | 6.11 | Testing completed | milestone | 0d | 2016-02-11 | 2016-02-11 | 127, 128, 129, 130, 131, 132, 133, 134, 135, 136 | 0d | start no earlier than 2016-01-29 |  |  |
| 138 | 7 | **Documentation** |  | 4d | 2016-02-11 | 2016-02-17 | 137 | 0d |  |  | 48h |
| 139 | 7.1 | Merge |  | 1d | 2016-02-11 | 2016-02-12 |  | 0d |  | Christian Sax; Fabian Ochsner | 16h |
| 140 | 7.2 | Review |  | 1d | 2016-02-12 | 2016-02-15 | 139 | 0d |  | Christian Sax; Fabian Ochsner | 16h |
| 141 | 7.3 | Finalize |  | 1d | 2016-02-15 | 2016-02-16 | 140 | 0d |  | Christian Sax; Fabian Ochsner | 16h |
| 142 | 7.4 | Documentation completed |  | 1d | 2016-02-16 | 2016-02-17 | 139, 140, 141 | 0d |  |  |  |
| 143 | 8 | **Finalize** |  | 1d | 2016-02-17 | 2016-02-18 | 142 | 0d |  |  |  |
| 144 | 8.1 | Project completed |  | 1d | 2016-02-17 | 2016-02-18 |  | 0d |  |  |  |
